# 网店B2C

Schedule from MS Project, 2009-04-20 to 2009-09-14, 6 hours a day.

## Calendars

- 标准: Mon-Fri 08:00-12:00, 13:00-17:00; Sat-Sun off.
- 平均人日工时日历: Mon-Sun 08:00-14:00. Exceptions (off unless hours are given): 2009-03-01 to 2009-08-31 08:00-14:00.

## Resources

| Resource | Rate |
| --- | --- |
| 杨伟 | 40 |
| 常军强 | 40 |
| 平均人日工时 |  |

## Schedule

| ID | WBS | Task | Duration | Start | Finish | Predecessors | Total slack | Constraint | Calendar |
| --- | --- | --- | --- | --- | --- | --- | --- | --- | --- |
| 1 | 1 | **前期准备** | 1d | 2009-04-20 | 2009-04-20 |  | 0d |  | 平均人日工时日历 |
| 2 | 1.1 | 需求定义 | 1d | 2009-04-20 | 2009-04-20 |  | 0d | start no earlier than 2009-04-20 | 平均人日工时日历 |
| 3 | 2 | **系统设计** | 4d | 2009-04-21 | 2009-04-24 | 1 | 0d |  | 平均人日工时日历 |
| 4 | 2.1 | 数据库设计 | 2d | 2009-04-21 | 2009-04-22 |  | 0d |  | 平均人日工时日历 |
| 5 | 2.2 | 框架设计 | 2d | 2009-04-23 | 2009-04-24 | 4 | 0d |  | 平均人日工时日历 |
| 6 | 3 | **后台管理：授权、添加操作员** | 3d | 2009-04-25 | 2009-04-27 | 3 | 0d |  | 平均人日工时日历 |
| 7 | 3.1 | 授权、添加操作员 | 1d | 2009-04-25 | 2009-04-25 |  | 0d |  | 平均人日工时日历 |
| 8 | 3.2 | 登录、授权 | 1d | 2009-04-26 | 2009-04-26 | 7 | 0d |  | 平均人日工时日历 |
| 9 | 3.3 | 密码管理 | 1d | 2009-04-27 | 2009-04-27 | 8 | 0d |  | 平均人日工时日历 |
| 10 | 4 | **会员管理：** | 8d | 2009-04-28 | 2009-05-05 | 6 | 0d |  | 平均人日工时日历 |
| 11 | 4.1 | 注册、登录、登录记录 | 4d | 2009-04-28 | 2009-05-01 |  | 0d |  | 平均人日工时日历 |
| 12 | 4.2 | 收货地址管理 | 2d | 2009-05-02 | 2009-05-03 | 11 | 0d |  | 平均人日工时日历 |
| 13 | 4.3 | 密码管理（修改、找回） | 1d | 2009-05-04 | 2009-05-04 | 12 | 0d |  | 平均人日工时日历 |
| 14 | 4.4 | 锁定用户 | 1d | 2009-05-05 | 2009-05-05 | 13 | 0d |  | 平均人日工时日历 |
| 15 | 5 | **站内信** | 5d | 2009-05-06 | 2009-05-10 | 10 | 0d |  | 平均人日工时日历 |
| 16 | 5.1 | 发送、列表、查看、删除 | 5d | 2009-05-06 | 2009-05-10 |  | 0d |  | 平均人日工时日历 |
| 17 | 6 | **分类管理：** | 5d | 2009-05-11 | 2009-05-15 | 15 | 0d |  | 平均人日工时日历 |
| 18 | 6.1 | 分类管理：添加、修改、状态维护 | 3d | 2009-05-11 | 2009-05-13 |  | 0d |  | 平均人日工时日历 |
| 19 | 6.2 | 分类属性管理：添加、修改、状态维护 | 2d | 2009-05-14 | 2009-05-15 | 18 | 0d |  | 平均人日工时日历 |
| 20 | 7 | **品牌管理** | 7d | 2009-05-16 | 2009-05-22 | 17 | 0d |  | 平均人日工时日历 |
| 21 | 7.1 | 品牌分类关系维护 | 1d | 2009-05-16 | 2009-05-16 |  | 0d |  | 平均人日工时日历 |
| 22 | 7.2 | 管理：添加、修改 | 2d | 2009-05-17 | 2009-05-18 | 21 | 0d |  | 平均人日工时日历 |
| 23 | 7.3 | 促销信息？销售专题？ | 2d | 2009-05-19 | 2009-05-20 | 22 | 0d |  | 平均人日工时日历 |
| 24 | 7.4 | 品牌列表页 | 2d | 2009-05-21 | 2009-05-22 | 23 | 0d |  | 平均人日工时日历 |

| ID | WBS | Task | Duration | Start | Finish | Predecessors | Total slack | Calendar |
| --- | --- | --- | --- | --- | --- | --- | --- | --- |
| 25 | 8 | **商品管理** | 13d | 2009-05-23 | 2009-06-04 | 20 | 0d | 平均人日工时日历 |
| 26 | 8.1 | 商品管理：添加、修改、上下架、价格修订、库存管理、检索、排序、状态维护 | 3d | 2009-05-23 | 2009-05-25 |  | 0d | 平均人日工时日历 |
| 27 | 8.2 | 商品属性管理：修改 | 2d | 2009-05-26 | 2009-05-27 | 26 | 0d | 平均人日工时日历 |
| 28 | 8.3 | 商品套装：列表、展示、添加、修改、状态维护 | 2d | 2009-05-28 | 2009-05-29 | 27 | 0d | 平均人日工时日历 |
| 29 | 8.4 | 商品搜索 | 2d | 2009-05-30 | 2009-05-31 | 28 | 0d | 平均人日工时日历 |
| 30 | 8.5 | 商品列表页 | 2d | 2009-06-01 | 2009-06-02 | 29 | 0d | 平均人日工时日历 |
| 31 | 8.6 | 商品最终页面 | 2d | 2009-06-03 | 2009-06-04 | 30 | 0d | 平均人日工时日历 |
| 32 | 9 | **静态内容发布系统：** | 9d | 2009-06-05 | 2009-06-13 | 25 | 0d | 平均人日工时日历 |
| 33 | 9.1 | CMS架构实现 | 4d | 2009-06-05 | 2009-06-08 |  | 0d | 平均人日工时日历 |
| 34 | 9.2 | Cmstag管理：添加、删除、修改 | 2d | 2009-06-09 | 2009-06-10 | 33 | 0d | 平均人日工时日历 |
| 35 | 9.3 | Cmstag缓存维护 | 1d | 2009-06-11 | 2009-06-11 | 34 | 0d | 平均人日工时日历 |
| 36 | 9.4 | 相关页面添加cmstag | 2d | 2009-06-12 | 2009-06-13 | 35 | 0d | 平均人日工时日历 |
| 37 | 10 | **购买流程** | 12d | 2009-06-14 | 2009-06-25 | 32 | 0d | 平均人日工时日历 |
| 38 | 10.1 | 会员购买、非会员购买（不建议提供）、二手购物支持 | 1d | 2009-06-14 | 2009-06-14 |  | 0d | 平均人日工时日历 |
| 39 | 10.2 | 添加，展示，修改，填写购买信息，生成订单，支付，通知（邮件，站内信） | 4d | 2009-06-15 | 2009-06-18 | 38 | 0d | 平均人日工时日历 |
| 40 | 10.3 | 支付接口实现 | 3d | 2009-06-19 | 2009-06-21 | 39 | 0d | 平均人日工时日历 |
| 41 | 10.4 | 个人中心：订单管理：查看（列表、详情），支付（有额度限制） | 2d | 2009-06-22 | 2009-06-23 | 40 | 0d | 平均人日工时日历 |
| 42 | 10.5 | 管理后台：订单处理：查看（列表、详情），状态修改（作废、发货等） | 2d | 2009-06-24 | 2009-06-25 | 41 | 0d | 平均人日工时日历 |
| 43 | 11 | **视听资讯：** | 10d | 2009-06-26 | 2009-07-05 | 37 | 0d | 平均人日工时日历 |
| 44 | 11.1 | 普通类新闻：增、删、改、查、发布 | 2d | 2009-06-26 | 2009-06-27 |  | 0d | 平均人日工时日历 |
| 45 | 11.2 | 图片类新闻：增、删、改、查、发布 | 2d | 2009-06-28 | 2009-06-29 | 44 | 0d | 平均人日工时日历 |
| 46 | 11.3 | 视频类新闻：增、删、改、查、发布 | 2d | 2009-06-30 | 2009-07-01 | 45 | 0d | 平均人日工时日历 |
| 47 | 11.4 | 热点评测：与商品相关，增、删、改、查、发布 | 4d | 2009-07-02 | 2009-07-05 | 46 | 0d | 平均人日工时日历 |
| 48 | 12 | **在线调查投票** | 3d | 2009-07-06 | 2009-07-08 | 43 | 0d | 平均人日工时日历 |
| 49 | 12.1 | 调查题目管理 | 1d | 2009-07-06 | 2009-07-06 |  | 0d | 平均人日工时日历 |
| 50 | 12.2 | 投票记录 | 1d | 2009-07-07 | 2009-07-07 | 49 | 0d | 平均人日工时日历 |
| 51 | 12.3 | 投票结果展示：前台、后台 | 1d | 2009-07-08 | 2009-07-08 | 50 | 0d | 平均人日工时日历 |

| ID | WBS | Task | Duration | Start | Finish | Predecessors | Total slack | Calendar |
| --- | --- | --- | --- | --- | --- | --- | --- | --- |
| 52 | 13 | **页面计数：** | 3d | 2009-07-09 | 2009-07-11 | 48 | 0d | 平均人日工时日历 |
| 53 | 13.1 | 布码 | 1d | 2009-07-09 | 2009-07-09 |  | 0d | 平均人日工时日历 |
| 54 | 13.2 | 技术接口 | 1d | 2009-07-10 | 2009-07-10 | 53 | 0d | 平均人日工时日历 |
| 55 | 13.3 | 应用：销售排行 | 1d | 2009-07-11 | 2009-07-11 | 54 | 0d | 平均人日工时日历 |
| 56 | 14 | **收藏** | 3d | 2009-07-12 | 2009-07-14 | 52 | 0d | 平均人日工时日历 |
| 57 | 14.1 | 个人中心：添加、查看、删除 | 3d | 2009-07-12 | 2009-07-14 |  | 0d | 平均人日工时日历 |
| 58 | 15 | **商品评论相关：** | 9d | 2009-07-15 | 2009-07-23 | 56 | 0d | 平均人日工时日历 |
| 59 | 15.1 | **售前咨询：QA** | 3d | 2009-07-15 | 2009-07-17 |  | 0d | 平均人日工时日历 |
| 60 | 15.1.1 | 用户提问 | 1d | 2009-07-15 | 2009-07-15 |  | 0d | 平均人日工时日历 |
| 61 | 15.1.2 | 管理员回复 | 1d | 2009-07-16 | 2009-07-16 | 60 | 0d | 平均人日工时日历 |
| 62 | 15.1.3 | 页面展示 | 1d | 2009-07-17 | 2009-07-17 | 61 | 0d | 平均人日工时日历 |
| 63 | 15.1.4 | 用户中心：我的维修 | 2d | 2009-07-15 | 2009-07-16 |  | 1d | 平均人日工时日历 |
| 64 | 15.1.5 | 用户中心：我的投诉 | 2d | 2009-07-15 | 2009-07-16 |  | 1d | 平均人日工时日历 |
| 65 | 15.1.6 | 用户中心：我的咨询 | 1d | 2009-07-15 | 2009-07-15 |  | 2d | 平均人日工时日历 |
| 66 | 15.2 | **商品评论** | 3d | 2009-07-18 | 2009-07-20 | 59 | 0d | 平均人日工时日历 |
| 67 | 15.2.1 | 用户评论 | 2d | 2009-07-18 | 2009-07-19 |  | 0d | 平均人日工时日历 |
| 68 | 15.2.2 | 页面展示 | 1d | 2009-07-20 | 2009-07-20 | 67 | 0d | 平均人日工时日历 |
| 69 | 15.3 | **用户话题** | 3d | 2009-07-21 | 2009-07-23 | 66 | 0d | 平均人日工时日历 |
| 70 | 15.3.1 | 用户新开话题 | 1d | 2009-07-21 | 2009-07-21 |  | 0d | 平均人日工时日历 |
| 71 | 15.3.2 | 用户回复话题 | 1d | 2009-07-22 | 2009-07-22 | 70 | 0d | 平均人日工时日历 |
| 72 | 15.3.3 | 页面展示 | 1d | 2009-07-23 | 2009-07-23 | 71 | 0d | 平均人日工时日历 |
| 73 | 16 | **解决方案：** | 12d | 2009-07-24 | 2009-08-04 | 58 | 0d | 平均人日工时日历 |
| 74 | 16.1 | Flash交互设计 | 5d | 2009-07-24 | 2009-07-28 |  | 0d | 平均人日工时日历 |
| 75 | 16.2 | 后台管理：条件的选择 | 2d | 2009-07-29 | 2009-07-30 | 74 | 0d | 平均人日工时日历 |
| 76 | 16.3 | 前台交互的实现 | 3d | 2009-07-31 | 2009-08-02 | 75 | 0d | 平均人日工时日历 |
| 77 | 16.4 | 解决方案收藏 | 2d | 2009-08-03 | 2009-08-04 | 76 | 0d | 平均人日工时日历 |

| ID | WBS | Task | Duration | Start | Finish | Predecessors | Total slack | Calendar |
| --- | --- | --- | --- | --- | --- | --- | --- | --- |
| 78 | 17 | **团购** | 6d | 2009-08-05 | 2009-08-10 | 73 | 0d | 平均人日工时日历 |
| 79 | 17.1 | 发起团购： 公司、个人 | 1d | 2009-08-05 | 2009-08-05 |  | 0d | 平均人日工时日历 |
| 80 | 17.2 | 用户参加团购 | 1d | 2009-08-06 | 2009-08-06 | 79 | 0d | 平均人日工时日历 |
| 81 | 17.3 | 用户中心：我发起的团购、我参加的团购 | 1d | 2009-08-07 | 2009-08-07 | 80 | 0d | 平均人日工时日历 |
| 82 | 17.4 | 团购详情（用户参加） | 1d | 2009-08-08 | 2009-08-08 | 81 | 0d | 平均人日工时日历 |
| 83 | 17.5 | 团购状况：进展状况 | 1d | 2009-08-09 | 2009-08-09 | 82 | 0d | 平均人日工时日历 |
| 84 | 17.6 | 网友问答 | 1d | 2009-08-10 | 2009-08-10 | 83 | 0d | 平均人日工时日历 |
| 85 | 18 | **视听拍卖** | 5d | 2009-08-11 | 2009-08-15 | 78 | 0d | 平均人日工时日历 |
| 86 | 18.1 | 拍卖管理：添加、修改、启动、结束、通知 | 1d | 2009-08-11 | 2009-08-11 |  | 0d | 平均人日工时日历 |
| 87 | 18.2 | 出价管理 | 1d | 2009-08-12 | 2009-08-12 | 86 | 0d | 平均人日工时日历 |
| 88 | 18.3 | 出价信息刷新（及时性） | 0.5d | 2009-08-13 | 2009-08-13 | 87 | 0d | 平均人日工时日历 |
| 89 | 18.4 | 出价记录 | 0.5d | 2009-08-13 | 2009-08-13 | 88 | 0d | 平均人日工时日历 |
| 90 | 18.5 | 个人中心：我参加的拍卖 | 1d | 2009-08-14 | 2009-08-14 | 89 | 0d | 平均人日工时日历 |
| 91 | 18.6 | 拍卖信息页：进行中、结束的 | 1d | 2009-08-15 | 2009-08-15 | 90 | 0d | 平均人日工时日历 |
| 92 | 19 | **视听当铺** | 5d | 2009-08-16 | 2009-08-20 | 85 | 0d | 平均人日工时日历 |
| 93 | 19.1 | 添加当品 | 1d | 2009-08-16 | 2009-08-16 |  | 0d | 平均人日工时日历 |
| 94 | 19.2 | 当品展示 | 1d | 2009-08-17 | 2009-08-17 | 93 | 0d | 平均人日工时日历 |
| 95 | 19.3 | 后台当品管理：查看、状态修改 | 1d | 2009-08-18 | 2009-08-18 | 94 | 0d | 平均人日工时日历 |
| 96 | 19.4 | 当品评论 | 1d | 2009-08-19 | 2009-08-19 | 95 | 0d | 平均人日工时日历 |
| 97 | 19.5 | 用户中心：我的典当 | 1d | 2009-08-20 | 2009-08-20 | 96 | 0d | 平均人日工时日历 |
| 98 | 20 | **二手交易** | 3d | 2009-08-21 | 2009-08-23 | 92 | 0d | 平均人日工时日历 |
| 99 | 20.1 | 发布求购信息 | 1d | 2009-08-21 | 2009-08-21 |  | 0d | 平均人日工时日历 |
| 100 | 20.2 | 发布商品信息 | 1d | 2009-08-22 | 2009-08-22 | 99 | 0d | 平均人日工时日历 |
| 101 | 20.3 | 我的二手 | 1d | 2009-08-23 | 2009-08-23 | 100 | 0d | 平均人日工时日历 |

| ID | WBS | Task | Duration | Start | Finish | Predecessors | Total slack | Calendar |
| --- | --- | --- | --- | --- | --- | --- | --- | --- |
| 102 | 21 | **视听租赁** | 4d | 2009-08-24 | 2009-08-27 | 98 | 0d | 平均人日工时日历 |
| 103 | 21.1 | 租赁商品管理 | 1d | 2009-08-24 | 2009-08-24 |  | 0d | 平均人日工时日历 |
| 104 | 21.2 | 租赁商品展示 | 1d | 2009-08-25 | 2009-08-25 | 103 | 0d | 平均人日工时日历 |
| 105 | 21.3 | 租赁申请提交 | 1d | 2009-08-26 | 2009-08-26 | 104 | 0d | 平均人日工时日历 |
| 106 | 21.4 | 租赁申请信息处理 | 1d | 2009-08-27 | 2009-08-27 | 105 | 0d | 平均人日工时日历 |
| 107 | 22 | **礼品商城** | 8d | 2009-08-28 | 2009-09-04 | 102 | 0d | 平均人日工时日历 |
| 108 | 22.1 | 积分消费 | 4d | 2009-08-28 | 2009-08-31 |  | 0d | 平均人日工时日历 |
| 109 | 22.2 | 鼎鼎优惠券 | 4d | 2009-09-01 | 2009-09-04 | 108 | 0d | 平均人日工时日历 |
| 110 | 23 | 任务冗余时间 | 10d | 2009-09-05 | 2009-09-14 | 107 | 0d | 平均人日工时日历 |
